# Gantt Chart v1-Final

Schedule from MS Project, 2020-07-13 to 2020-10-08, A marks actual dates.

## Calendars

- Standard: Mon-Fri 08:00-12:00, 13:00-17:00; Sat-Sun off.

## Resources

| Resource |
| --- |
| Supun |
| Kalaivani |
| Ruban |

## Schedule

| ID | WBS | Task | Type | Duration | Start | Finish | Predecessors | Complete | Remaining | Baseline start | Baseline finish | Baseline duration | Total slack | Free slack | Constraint | Resources | Work | Actual work |
| --- | --- | --- | --- | --- | --- | --- | --- | --- | --- | --- | --- | --- | --- | --- | --- | --- | --- | --- |
| 1 | 1 | **Casual Jobs Database v1** |  | 57.75d | 2020-07-13 10:00 A | 2020-09-30 17:00 |  | 52% | 27.65d | 2020-07-13 10:00 | 2020-10-01 11:00 | 58.12d | 0d |  |  |  | 1258h | 813h |
| 2 | 1.1 | **initiation** |  | 27.5d | 2020-07-13 10:00 A | 2020-08-19 15:00 A |  | 100% |  | 2020-07-13 10:00 | 2020-08-17 12:00 | 25.25d |  |  |  |  | 621h | 621h |
| 3 | 1.1.1 | Project identification |  | 0.75d | 2020-07-13 10:00 A | 2020-07-13 17:00 A |  | 100% |  | 2020-07-13 10:00 | 2020-07-14 17:00 | 1.75d |  |  |  | Supun; Kalaivani; Ruban | 18h | 18h |
| 4 | 1.1.2 | Assign team members |  | 0.75d | 2020-07-14 08:00 A | 2020-07-14 15:00 A | 3 | 100% |  | 2020-07-15 08:00 | 2020-07-15 16:00 | 0.88d |  |  |  | Supun; Kalaivani; Ruban | 18h | 18h |
| 5 | 1.1.3 | Client meeting |  | 2h | 2020-07-15 10:00 A | 2020-07-15 12:00 A | 4 | 100% |  | 2020-07-15 16:00 | 2020-07-16 09:00 | 2h |  |  | start no earlier than 2020-07-15 10:00 | Supun; Kalaivani; Ruban | 6h | 6h |
| 6 | 1.1.4 | Organize requirments |  | 3.62d | 2020-07-16 10:00 A | 2020-07-21 16:00 A | 5 | 100% |  | 2020-07-16 09:00 | 2020-07-21 14:00 | 3.5d |  |  | start no earlier than 2020-07-16 10:00 | Supun; Kalaivani; Ruban | 87h | 87h |
| 7 | 1.1.5 | Document preparation |  | 7d | 2020-07-22 10:00 A | 2020-07-31 10:00 A | 6 | 100% |  | 2020-07-21 14:00 | 2020-07-29 15:00 | 6.12d |  |  | start no earlier than 2020-07-22 10:00 | Supun; Kalaivani; Ruban | 168h | 168h |
| 8 | 1.1.6 | Project proposal preparation |  | 9d | 2020-07-31 10:00 A | 2020-08-13 10:00 A | 7 | 100% |  | 2020-07-29 15:00 | 2020-08-12 11:00 | 9.62d |  |  |  | Supun; Kalaivani; Ruban | 216h | 216h |
| 9 | 1.1.7 | Project advisor meeting |  | 2h | 2020-08-13 10:00 A | 2020-08-13 12:00 A | 8 | 100% |  | 2020-08-12 11:00 | 2020-08-12 14:00 | 2h |  |  |  | Supun; Kalaivani; Ruban | 6h | 6h |
| 10 | 1.1.8 | Proposal improvements |  | 4d | 2020-08-13 13:00 A | 2020-08-19 12:00 A | 9 | 100% |  | 2020-08-12 14:00 | 2020-08-17 10:00 | 2.62d |  |  |  | Supun; Kalaivani; Ruban | 96h | 96h |
| 11 | 1.1.9 | Client meeting |  | 2h | 2020-08-19 13:00 A | 2020-08-19 15:00 A | 10 | 100% |  | 2020-08-17 10:00 | 2020-08-17 12:00 | 2h |  |  |  | Supun; Kalaivani; Ruban | 6h | 6h |
| 12 | 1.2 | Project proposal approved | milestone | 0d | 2020-08-19 15:00 A | 2020-08-19 15:00 A | 2 | 100% |  | 2020-08-17 12:00 | 2020-08-17 12:00 | 0d |  |  |  |  |  |  |
| 13 | 1.3 | Business modeling completed | milestone | 0d | 2020-08-31 14:00 A | 2020-08-31 14:00 A | 12FS+7.88d | 100% |  | 2020-08-17 12:00 | 2020-08-17 12:00 | 0d |  |  |  |  |  |  |
| 14 | 1.4 | **Data modeling** |  | 15.62d | 2020-08-19 15:00 A | 2020-09-10 11:00 | 2 | 33% | 10.52d | 2020-08-17 13:00 | 2020-09-16 10:00 | 21.75d | 0d |  |  |  | 367h | 192h |
| 15 | 1.4.1 | **Wireframe design** |  | 8d | 2020-08-19 15:00 A | 2020-08-31 15:00 A |  | 100% |  | 2020-08-17 13:00 | 2020-08-21 12:00 | 4d |  |  |  |  | 192h | 192h |
| 16 | 1.4.1.1 | Wireframe creation |  | 7.5d | 2020-08-19 15:00 A | 2020-08-31 10:00 A |  | 100% |  | 2020-08-17 13:00 | 2020-08-20 17:00 | 3.5d |  |  |  | Supun; Kalaivani; Ruban | 180h | 180h |
| 17 | 1.4.1.2 | Advisor meeting |  | 2h | 2020-08-31 10:00 A | 2020-08-31 12:00 A | 16 | 100% |  | 2020-08-21 08:00 | 2020-08-21 10:00 | 2h |  |  |  | Supun; Kalaivani; Ruban | 6h | 6h |
| 18 | 1.4.1.3 | Client meeting |  | 2h | 2020-08-31 13:00 A | 2020-08-31 15:00 A | 17 | 100% |  | 2020-08-21 10:00 | 2020-08-21 12:00 | 2h |  |  |  | Supun; Kalaivani; Ruban | 6h | 6h |
| 19 | 1.4.2 | Wireframe design approved | milestone | 0d | 2020-08-31 15:00 A | 2020-08-31 15:00 A | 15 | 100% |  | 2020-08-21 12:00 | 2020-08-21 12:00 | 0d |  |  |  |  |  |  |
| 20 | 1.4.3 | **Design prototype (UI)** |  | 6.75d | 2020-08-31 15:00 | 2020-09-09 12:00 |  |  |  | 2020-08-21 13:00 | 2020-09-11 14:00 | 15.12d | 0d |  |  |  | 161h |  |
| 21 | 1.4.3.1 | Plan front-end components |  | 1.75d | 2020-08-31 15:00 | 2020-09-02 12:00 | 19 |  |  | 2020-08-21 13:00 | 2020-08-24 11:00 | 0.88d | 0d |  |  | Kalaivani; Ruban; Supun | 42h |  |
| 22 | 1.4.3.2 | Design Admin panel |  | 1.25d | 2020-09-02 13:00 | 2020-09-03 15:00 | 21 |  |  | 2020-08-24 11:00 | 2020-08-26 09:00 | 1.75d | 0d |  |  | Ruban | 10h |  |
| 23 | 1.4.3.3 | Design Employer registration UI |  | 1.25d | 2020-09-02 13:00 | 2020-09-03 15:00 | 21 |  |  | 2020-08-24 11:00 | 2020-08-25 10:00 | 0.88d | 1.38d | 0d |  | Kalaivani | 10h |  |
| 24 | 1.4.3.4 | Design Employer profile UI |  | 0.88d | 2020-09-02 13:00 | 2020-09-03 11:00 | 21 |  |  | 2020-08-24 11:00 | 2020-08-25 10:00 | 0.88d | 1.5d | 0d |  | Supun | 7h |  |
| 25 | 1.4.3.5 | Design Job seeker registration |  | 2.25d | 2020-09-03 15:00 | 2020-09-07 17:00 | 23 |  |  | 2020-08-26 09:00 | 2020-08-27 16:00 | 1.75d | 1.38d | 0d |  | Kalaivani | 18h |  |
| 26 | 1.4.3.6 | Design Job seeker profile |  | 2.25d | 2020-09-03 15:00 | 2020-09-07 17:00 | 22 |  |  | 2020-08-27 16:00 | 2020-08-31 14:00 | 1.75d | 0d |  |  | Ruban | 18h |  |
| 27 | 1.4.3.7 | Reporting structure (PDF) |  | 1.75d | 2020-09-03 11:00 | 2020-09-07 09:00 | 24 |  |  | 2020-08-31 14:00 | 2020-09-02 11:00 | 1.75d | 1.5d | 0d |  | Supun | 14h |  |
| 28 | 1.4.3.8 | Matched jobs UI integration |  | 1d | 2020-09-08 08:00 | 2020-09-08 17:00 | 25 |  |  | 2020-09-02 11:00 | 2020-09-08 15:00 | 4.38d | 1.38d |  |  | Kalaivani | 8h |  |
| 29 | 1.4.3.9 | Homepage with Nav integration |  | 1d | 2020-09-08 08:00 | 2020-09-08 17:00 | 26 |  |  | 2020-09-08 15:00 | 2020-09-09 14:00 | 0.88d | 0d |  |  | Ruban | 8h |  |
| 30 | 1.4.3.10 | Include responsive CSS classes |  | 1.75d | 2020-09-07 09:00 | 2020-09-08 16:00 | 27 |  |  | 2020-09-09 14:00 | 2020-09-11 11:00 | 1.75d | 1.5d |  |  | Supun | 14h |  |
| 31 | 1.4.3.11 | Advisor meeting |  | 2h | 2020-09-09 08:00 | 2020-09-09 10:00 | 29 |  |  | 2020-09-11 11:00 | 2020-09-11 14:00 | 2h | 0d |  |  | Kalaivani; Ruban; Supun | 6h |  |
| 32 | 1.4.3.12 | Client meeting |  | 2h | 2020-09-09 10:00 | 2020-09-09 12:00 | 31 |  |  | 2020-09-11 11:00 | 2020-09-11 14:00 | 2h | 0d |  |  | Kalaivani; Ruban; Supun | 6h |  |
| 33 | 1.4.4 | Design prototype approved | milestone | 0d | 2020-09-09 12:00 | 2020-09-09 12:00 | 32 |  |  | 2020-09-11 14:00 | 2020-09-11 14:00 | 0d | 0d |  |  |  |  |  |
| 34 | 1.4.5 | Database design |  | 0.88d | 2020-09-09 13:00 | 2020-09-10 11:00 | 33 |  |  | 2020-09-11 14:00 | 2020-09-16 10:00 | 2.62d | 0d |  |  | Supun; Ruban | 14h |  |
| 35 | 1.5 | Data modeling completed | milestone | 0d | 2020-09-10 11:00 | 2020-09-10 11:00 | 14 |  |  | 2020-09-16 10:00 | 2020-09-16 10:00 | 0d | 0d |  |  |  |  |  |

| ID | WBS | Task | Type | Duration | Start | Finish | Predecessors | Baseline start | Baseline finish | Baseline duration | Total slack | Resources | Work |
| --- | --- | --- | --- | --- | --- | --- | --- | --- | --- | --- | --- | --- | --- |
| 36 | 1.6 | **Back-end development** |  | 14.62d | 2020-09-10 11:00 | 2020-09-30 17:00 | 35 | 2020-09-16 10:00 | 2020-10-01 11:00 | 11.12d | 0d |  | 270h |
| 37 | 1.6.1 | **Employer panel** |  | 8.88d | 2020-09-10 11:00 | 2020-09-23 10:00 |  | 2020-09-16 10:00 | 2020-09-23 14:00 | 5.38d | 0d |  | 209h |
| 38 | 1.6.1.1 | Develop panel functions |  | 7.88d | 2020-09-10 11:00 | 2020-09-22 10:00 |  | 2020-09-16 10:00 | 2020-09-22 14:00 | 4.38d | 0d | Supun; Kalaivani; Ruban | 189h |
| 39 | 1.6.1.2 | Advisor meeting |  | 2h | 2020-09-22 10:00 | 2020-09-22 12:00 | 38 | 2020-09-22 14:00 | 2020-09-22 16:00 | 2h | 0d | Kalaivani; Ruban; Supun | 6h |
| 40 | 1.6.1.3 | Client meeting |  | 2h | 2020-09-22 13:00 | 2020-09-22 15:00 | 39 | 2020-09-22 16:00 | 2020-09-23 09:00 | 2h | 0d | Kalaivani; Ruban; Supun | 6h |
| 41 | 1.6.1.4 | Testing |  | 4h | 2020-09-22 15:00 | 2020-09-23 10:00 | 40 | 2020-09-23 09:00 | 2020-09-23 14:00 | 4h | 0d | Ruban; Kalaivani | 8h |
| 42 | 1.6.1.5 | Unit testing approved | milestone | 0d | 2020-09-23 10:00 | 2020-09-23 10:00 | 41 | 2020-09-23 14:00 | 2020-09-23 14:00 | 0d | 0d |  |  |
| 43 | 1.6.1.6 | Employer panel approved | milestone | 0d | 2020-09-23 10:00 | 2020-09-23 10:00 | 42 | 2020-09-23 14:00 | 2020-09-23 14:00 | 0d | 0d |  |  |
| 44 | 1.6.2 | **Job seeker panel** |  | 5.75d | 2020-09-23 10:00 | 2020-09-30 17:00 | 43 | 2020-09-23 14:00 | 2020-10-01 11:00 | 5.75d | 0d |  | 61h |
| 45 | 1.6.2.1 | Develop panel functions |  | 4.38d | 2020-09-23 10:00 | 2020-09-29 14:00 |  | 2020-09-23 14:00 | 2020-09-29 17:00 | 4.38d | 0d | Supun | 35h |
| 46 | 1.6.2.2 | Report generation |  | 5h | 2020-09-29 14:00 | 2020-09-30 10:00 | 45 | 2020-09-30 08:00 | 2020-09-30 14:00 | 5h | 0d | Kalaivani; Ruban | 10h |
| 47 | 1.6.2.3 | Advisor meeting |  | 2h | 2020-09-30 10:00 | 2020-09-30 12:00 | 46 | 2020-09-30 14:00 | 2020-09-30 16:00 | 2h | 0d | Kalaivani; Ruban; Supun | 6h |
| 48 | 1.6.2.4 | Client meeting |  | 2h | 2020-09-30 13:00 | 2020-09-30 15:00 | 47 | 2020-09-30 16:00 | 2020-10-01 09:00 | 2h | 0d | Kalaivani; Ruban; Supun | 6h |
| 49 | 1.6.2.5 | Testing |  | 2h | 2020-09-30 15:00 | 2020-09-30 17:00 | 48 | 2020-10-01 09:00 | 2020-10-01 11:00 | 2h | 0d | Kalaivani; Ruban | 4h |
| 50 | 1.6.2.6 | Unit testing approved | milestone | 0d | 2020-09-30 17:00 | 2020-09-30 17:00 | 49 | 2020-10-01 11:00 | 2020-10-01 11:00 | 0d | 0d |  |  |
| 51 | 1.6.2.7 | Job seeker panel approved | milestone | 0d | 2020-09-30 17:00 | 2020-09-30 17:00 | 50 | 2020-10-01 11:00 | 2020-10-01 11:00 | 0d | 0d |  |  |
| 52 | 1.7 | Back-end development completed | milestone | 0d | 2020-09-30 17:00 | 2020-09-30 17:00 | 44 | 2020-10-01 11:00 | 2020-10-01 11:00 | 0d | 0d |  |  |
| 53 | 1.8 | Process modeling completed | milestone | 0d | 2020-09-30 17:00 | 2020-09-30 17:00 | 52 | 2020-10-01 11:00 | 2020-10-01 11:00 | 0d | 0d |  |  |
| 54 | 2 | **Application modeling and testing** |  | 2.88d | 2020-10-01 08:00 | 2020-10-05 16:00 | 53 | 2020-10-01 11:00 | 2020-10-06 09:00 | 2.75d | 0d |  | 46h |
| 55 | 2.1 | Live production environment |  | 6h | 2020-10-01 08:00 | 2020-10-01 15:00 |  | 2020-10-01 11:00 | 2020-10-02 09:00 | 6h | 5d | Supun | 6h |
| 56 | 2.2 | Create user manual |  | 1.75d | 2020-10-01 08:00 | 2020-10-02 15:00 |  | 2020-10-01 11:00 | 2020-10-05 09:00 | 1.75d | 0d | Kalaivani | 14h |
| 57 | 2.3 | Component testing |  | 4h | 2020-10-01 08:00 | 2020-10-01 12:00 |  | 2020-10-01 11:00 | 2020-10-01 14:00 | 2h | 5.25d | Ruban | 4h |
| 58 | 2.4 | Unit testing |  | 3h | 2020-10-02 15:00 | 2020-10-05 09:00 | 56 | 2020-10-05 09:00 | 2020-10-05 11:00 | 2h | 0d | Ruban | 3h |
| 59 | 2.5 | System testing |  | 1h | 2020-10-05 09:00 | 2020-10-05 10:00 | 58 | 2020-10-05 11:00 | 2020-10-05 12:00 | 1h | 3.5d | Ruban | 1h |
| 60 | 2.6 | Advisor meeting |  | 2h | 2020-10-05 09:00 | 2020-10-05 11:00 | 58 | 2020-10-05 11:00 | 2020-10-05 14:00 | 2h | 0d | Kalaivani; Ruban; Supun | 6h |
| 61 | 2.7 | Client meeting |  | 4h | 2020-10-05 11:00 | 2020-10-05 16:00 | 60 | 2020-10-05 14:00 | 2020-10-06 09:00 | 4h | 0d | Kalaivani; Ruban; Supun | 12h |
| 62 | 3 | Application modeling & testing completed | milestone | 0d | 2020-10-05 16:00 | 2020-10-05 16:00 | 61 | 2020-10-06 09:00 | 2020-10-06 09:00 | 0d | 0d |  |  |

| ID | WBS | Task | Type | Duration | Start | Finish | Predecessors | Baseline start | Baseline finish | Baseline duration | Total slack | Resources | Work |
| --- | --- | --- | --- | --- | --- | --- | --- | --- | --- | --- | --- | --- | --- |
| 63 | 4 | **Cutover** |  | 2.88d | 2020-10-05 16:00 | 2020-10-08 15:00 | 62 | 2020-10-06 09:00 | 2020-10-08 17:00 | 2.88d | 0d |  | 48h |
| 64 | 4.1 | Project end report |  | 2.62d | 2020-10-05 16:00 | 2020-10-08 12:00 |  | 2020-10-06 09:00 | 2020-10-08 15:00 | 2.62d | 0d | Kalaivani; Ruban | 42h |
| 65 | 4.2 | Official project handover |  | 2h | 2020-10-08 13:00 | 2020-10-08 15:00 | 64 | 2020-10-08 15:00 | 2020-10-08 17:00 | 2h | 0d | Kalaivani; Ruban; Supun | 6h |
| 66 | 5 | Project ended | milestone | 0d | 2020-10-08 15:00 | 2020-10-08 15:00 | 65 | 2020-10-08 17:00 | 2020-10-08 17:00 | 0d | 0d |  |  |
